# 项目进度计划

How a schedule from a web Gantt chart changed from version to version. A marks actual dates.

## Version 1 (saved 2024-05-12)

| ID | WBS | Task | Duration | Start | Finish |
| --- | --- | --- | --- | --- | --- |
| 2 | 1 | **签订合同到安装调试 6个月** | 184d | 2024-05-29 | 2024-11-28 |
| 3 |  | 签合同 | 3d | 2024-05-29 | 2024-05-31 |
| 4 |  | 设备生产 | 30d | 2024-06-01 | 2024-06-30 |
| 5 |  | 勘察 | 15d | 2024-06-03 | 2024-06-17 |
| 6 |  | 施工方案设计 | 21d | 2024-06-18 | 2024-07-08 |
| 7 |  | 出厂验收 | 3d | 2024-06-28 | 2024-06-30 |
| 8 |  | 运输 | 10d | 2024-07-01 | 2024-07-10 |
| 9 | 1.7 | **安装调试** | 141d | 2024-07-11 | 2024-11-28 |
| 10 |  | 工程组1 | 127d | 2024-07-11 | 2024-11-14 |
| 11 |  | 工程组2 | 127d | 2024-07-11 | 2024-11-14 |
| 12 |  | 工程组3 | 127d | 2024-07-11 | 2024-11-14 |
| 13 |  | 工程组4 | 127d | 2024-07-11 | 2024-11-14 |
| 14 |  | 系统联调 | 14d | 2024-11-15 | 2024-11-28 |
| 15 | 2 | **试运行到验收结束 8个月** | 242d | 2024-11-29 | 2025-07-28 |
| 16 |  | 试运行 | 242d | 2024-11-29 | 2025-07-28 |
| 17 |  | 比测 | 90d | 2024-12-29 | 2025-03-28 |
| 18 |  | 验收 | 3d | 2025-07-26 | 2025-07-28 |
| 19 |  | 质保 | 1584d | 2025-07-29 | 2029-11-28 |

## Version 2 (saved 2024-05-12)

Last finish 2029-11-28 → 2031-07-28 (+607d).

Added:

| ID | Task | Duration | Start | Finish | Predecessors |
| --- | --- | --- | --- | --- | --- |
| 2 | **签订合同到安装调试（6个月）** | 184d | 2024-05-29 | 2024-11-28 |  |
| 9 | **集成应用系统开发** | 37d | 2024-07-09 | 2024-08-14 |  |
| 10 | 服务器和网络搭建 | 3d | 2024-07-09 | 2024-07-11 |  |
| 11 | **系统软件开发** | 32d | 2024-07-09 | 2024-08-09 |  |
| 12 | 总体设计 | 2d | 2024-07-09 | 2024-07-10 |  |
| 13 | 基础软件开发 | 10d | 2024-07-11 | 2024-07-20 | 12 |
| 14 | 数据库开发 | 20d | 2024-07-11 | 2024-07-30 | 12 |
| 15 | 后台服务开发 | 30d | 2024-07-11 | 2024-08-09 | 12 |
| 16 | 系统部署测试 | 5d | 2024-08-10 | 2024-08-14 |  |
| 19 | 高频地波雷达安装调试 | 7d | 2024-07-29 | 2024-08-04 |  |
| 20 | 自动气象站安装调试 | 3d | 2024-08-05 | 2024-08-07 |  |
| 21 | 视频监控安装调试 | 1d | 2024-08-08 | 2024-08-08 |  |
| 22 | 北斗终端调试接入 | 1d | 2024-08-09 | 2024-08-09 |  |
| 23 | VSAT小站安装调试 | 3d | 2024-08-10 | 2024-08-12 |  |
| 24 | KVM调试 | 1d | 2024-08-13 | 2024-08-13 |  |
| 25 | 运控装置安装调试 | 1d | 2024-08-14 | 2024-08-14 |  |
| 26 | 前端软件调试 | 14d | 2024-08-15 | 2024-08-28 | 16 |
| 28 | 高频地波雷达安装调试 | 7d | 2024-08-29 | 2024-09-04 |  |
| 29 | 自动气象站安装调试 | 3d | 2024-09-05 | 2024-09-07 |  |
| 30 | 视频监控安装调试 | 1d | 2024-09-08 | 2024-09-08 |  |
| 31 | 北斗终端调试接入 | 1d | 2024-09-09 | 2024-09-09 |  |
| 32 | VSAT小站安装调试 | 3d | 2024-09-10 | 2024-09-12 |  |
| 33 | KVM调试 | 1d | 2024-09-13 | 2024-09-13 |  |
| 34 | 运控装置安装调试 | 1d | 2024-09-14 | 2024-09-14 |  |
| 35 | 前端软件调试 | 14d | 2024-09-15 | 2024-09-28 | 34 |
| 37 | 高频地波雷达安装调试 | 7d | 2024-09-29 | 2024-10-05 |  |
| 38 | 自动气象站安装调试 | 3d | 2024-10-06 | 2024-10-08 |  |
| 39 | 视频监控安装调试 | 1d | 2024-10-09 | 2024-10-09 |  |
| 40 | 北斗终端调试接入 | 1d | 2024-10-10 | 2024-10-10 |  |
| 41 | VSAT小站安装调试 | 3d | 2024-10-11 | 2024-10-13 |  |
| 42 | 运控装置安装调试 | 1d | 2024-10-14 | 2024-10-14 |  |
| 43 | KVM调试 | 1d | 2024-10-15 | 2024-10-15 |  |
| 44 | 前端软件调试 | 13d | 2024-10-16 | 2024-10-28 | 43 |
| 46 | 高频地波雷达安装调试 | 7d | 2024-10-29 | 2024-11-04 |  |
| 47 | 自动气象站安装调试 | 3d | 2024-11-05 | 2024-11-07 |  |
| 48 | 视频监控安装调试 | 1d | 2024-11-08 | 2024-11-08 |  |
| 49 | 北斗终端调试接入 | 1d | 2024-11-09 | 2024-11-09 |  |
| 50 | VSAT小站安装调试 | 3d | 2024-11-10 | 2024-11-12 |  |
| 51 | 运控装置安装调试 | 1d | 2024-11-13 | 2024-11-13 |  |
| 52 | KVM调试 | 1d | 2024-11-14 | 2024-11-14 |  |
| 53 | 前端软件调试 | 14d | 2024-11-15 | 2024-11-28 | 52 |
| 54 | **试运行到验收结束 （8个月）** | 242d | 2024-11-29 | 2025-07-28 |  |
| 58 | 质保（6年） | 2191d | 2025-07-29 | 2031-07-28 |  |

Removed: 2 签订合同到安装调试 6个月; 14 系统联调; 15 试运行到验收结束 8个月; 19 质保

Changed:

| ID | Task | Start | Finish | Duration | Predecessors |
| --- | --- | --- | --- | --- | --- |
| 17 | **安装调试** | 2024-07-11 → 2024-07-29 (+18d) |  | 141d → 123d |  |
| 18 | **工程组1** | 2024-07-11 → 2024-07-29 (+18d) | 2024-11-14 → 2024-08-28 (-78d) | 127d → 31d |  |
| 27 | **工程组2** | 2024-07-11 → 2024-08-29 (+49d) | 2024-11-14 → 2024-09-28 (-47d) | 127d → 31d |  |
| 36 | **工程组3** | 2024-07-11 → 2024-09-29 (+80d) | 2024-11-14 → 2024-10-28 (-17d) | 127d → 30d |  |
| 45 | **工程组4** | 2024-07-11 → 2024-10-29 (+110d) | 2024-11-14 → 2024-11-28 (+14d) | 127d → 31d |  |
| 55 | 试运行 |  | 2025-07-28 → 2025-07-25 (-3d) | 242d → 239d |  |
| 57 | 验收 |  |  |  | none → 55 |
